# Project Gantt Chart

Schedule from MS Project, 2011-02-01 to 2012-01-19, 3 hours a day, A marks actual dates.
Microsoft, Inc

## Calendars

- OurStandard: Mon-Fri 20:00-23:00; Sat-Sun off.

## Resources

| Resource |
| --- |
| PL |
| QM |
| TL |
| PR1 |
| PR2 |
| PR3 |

## Schedule

| ID | WBS | Task | Duration | Start | Finish | Predecessors | Complete | Remaining | Baseline start | Baseline finish | Baseline duration | Total slack | Free slack | Resources | Work | Actual work |
| --- | --- | --- | --- | --- | --- | --- | --- | --- | --- | --- | --- | --- | --- | --- | --- | --- |
| 1 | 1 | **Initial Planning** | 18d | 2011-02-01 A | 2011-02-24 |  | 56% | 8d | 2011-02-01 | 2011-02-24 | 18d | 235d |  |  | 99h | 45h |
| 2 | 1.1 | Produce Project Plan | 9d | 2011-02-01 A | 2011-02-11 |  | 81% | 1.67d | 2011-02-01 | 2011-02-11 | 9d | 236.67d | 0d | PL | 27h | 22h |
| 3 | 1.2 | Produce Quality Plan | 9d | 2011-02-01 A | 2011-02-11 |  | 67% | 3d | 2011-02-01 | 2011-02-11 | 9d | 241d | 6d | QM | 27h | 18h |
| 4 | 1.3 | Set-up filing system | 6d | 2011-02-14 A | 2011-02-21 | 2 | 28% | 4.33d | 2011-02-14 | 2011-02-21 | 6d | 235d | 0d | QM | 18h | 5h |
| 5 | 1.4 | Review/finalize Plan | 3d | 2011-02-22 | 2011-02-24 | 2, 3, 4 |  |  | 2011-02-22 | 2011-02-24 | 3d | 235d |  | PL; QM; TL | 27h |  |
| 6 | 2 | **Requirements Identification** | 29d | 2011-02-25 A | 2011-04-06 |  | 31% | 20d | 2011-02-25 | 2011-04-06 | 29d | 0d |  |  | 123h | 27h |
| 7 | 2.1 | Interview Users | 9d | 2011-02-25 A | 2011-03-09 A | 5 | 100% |  | 2011-02-25 | 2011-03-09 | 9d |  |  | PL | 27h | 27h |
| 8 | 2.2 | Undertake Use Case Modeling | 5d | 2011-03-10 | 2011-03-16 | 7 |  |  | 2011-03-10 | 2011-03-16 | 5d | 0d |  | PL | 15h |  |
| 9 | 2.3 | Produce Use Case Model Survey | 9d | 2011-03-17 | 2011-03-29 | 8 |  |  | 2011-03-17 | 2011-03-29 | 9d | 0d |  | PL | 27h |  |
| 10 | 2.4 | Review/finalize Requirements documentation | 6d | 2011-03-30 | 2011-04-06 | 9 |  |  | 2011-03-30 | 2011-04-06 | 6d | 0d |  | PL; QM; TL | 54h |  |
| 11 | 3 | **Requirements Specification** | 43d | 2011-04-07 | 2011-06-06 |  |  |  | 2011-04-07 | 2011-06-06 | 43d | 0d |  |  | 333h |  |
| 12 | 3.1 | Identify Domain Objects/Attributes | 3d | 2011-04-07 | 2011-04-11 | 10 |  |  | 2011-04-07 | 2011-04-11 | 3d | 0d |  | PR1; PR2; QM | 27h |  |
| 13 | 3.2 | Produce Class diagrams | 9d | 2011-04-12 | 2011-04-22 | 12 |  |  | 2011-04-12 | 2011-04-22 | 9d | 0d |  | PL | 27h |  |
| 14 | 3.3 | Write UCRR (Analysis) | 25d | 2011-04-25 | 2011-05-27 | 13 |  |  | 2011-04-25 | 2011-05-27 | 25d | 0d |  | PR1; PR2; QM | 225h |  |
| 15 | 3.4 | Review/finalize Use Case Realization Reports | 6d | 2011-05-30 | 2011-06-06 | 13, 14 |  |  | 2011-05-30 | 2011-06-06 | 6d | 0d |  | PL; QM; TL | 54h |  |
| 16 | 4 | **Design Modeling** | 51d | 2011-06-07 | 2011-08-16 |  |  |  | 2011-06-07 | 2011-08-16 | 51d | 0d |  |  | 534h |  |
| 17 | 4.1 | Prototype User Interface | 15d | 2011-06-07 | 2011-06-27 | 15 |  |  | 2011-06-07 | 2011-06-27 | 15d | 148d |  | TL; QM; PR2 | 135h |  |
| 18 | 4.2 | Create transition strategy from analysis to design | 5d | 2011-06-07 | 2011-06-13 | 15 |  |  | 2011-06-07 | 2011-06-13 | 5d | 0d |  | PL | 15h |  |
| 19 | 4.3 | Define software architecture | 5d | 2011-06-14 | 2011-06-20 | 18 |  |  | 2011-06-14 | 2011-06-20 | 5d | 0d |  | TL | 15h |  |
| 20 | 4.4 | Create DB Design | 5d | 2011-06-21 | 2011-06-27 | 19 |  |  | 2011-06-21 | 2011-06-27 | 5d | 20d |  | PL | 15h |  |
| 21 | 4.5 | Write UCRR (Design) | 25d | 2011-06-21 | 2011-07-25 | 19 |  |  | 2011-06-21 | 2011-07-25 | 25d | 0d |  | PR1; PR2; QM | 225h |  |
| 22 | 4.6 | Produce Object Specifications | 5d | 2011-07-26 | 2011-08-01 | 21 |  |  | 2011-07-26 | 2011-08-01 | 5d | 123d |  | PR1; PR2; QM | 45h |  |
| 23 | 4.7 | Produce Design Model Report | 10d | 2011-07-26 | 2011-08-08 | 18, 19, 20, 21 |  |  | 2011-07-26 | 2011-08-08 | 10d | 0d |  | TL | 30h |  |
| 24 | 4.8 | Review/finalize Design Document | 6d | 2011-08-09 | 2011-08-16 | 23 |  |  | 2011-08-09 | 2011-08-16 | 6d | 0d |  | PL; QM; TL | 54h |  |

| ID | WBS | Task | Duration | Start | Finish | Predecessors | Complete | Remaining | Baseline start | Baseline finish | Baseline duration | Total slack | Free slack | Resources | Work | Actual work |
| --- | --- | --- | --- | --- | --- | --- | --- | --- | --- | --- | --- | --- | --- | --- | --- | --- |
| 25 | 5 | **Programming** | 35d | 2011-08-17 | 2011-10-04 |  |  |  | 2011-08-17 | 2011-10-04 | 35d | 0d |  |  | 393h |  |
| 26 | 5.1 | Define Database tables and fields | 5d | 2011-08-17 | 2011-08-23 | 24 |  |  | 2011-08-17 | 2011-08-23 | 5d | 0d |  | TL | 15h |  |
| 27 | 5.2 | Software Coding | 30d | 2011-08-24 | 2011-10-04 | 26 |  |  | 2011-08-24 | 2011-10-04 | 30d | 0d |  | PL [20%]; QM; TL; PR1; PR2 | 378h |  |
| 28 | 6 | **Systems Testing** | 60d | 2011-08-17 | 2011-11-08 |  |  |  | 2011-08-17 | 2011-11-08 | 60d | 35d |  |  | 301.2h |  |
| 29 | 6.1 | Prepare Systems Test Plan | 10d | 2011-08-17 | 2011-08-30 | 24 |  |  | 2011-08-17 | 2011-08-30 | 10d | 89d | 0d | PL [80%]; PR3 | 54h |  |
| 30 | 6.2 | Review/finalize Systems Test Plan | 3d | 2011-08-31 | 2011-09-02 | 29 |  |  | 2011-08-31 | 2011-09-02 | 3d | 99d |  | PL [80%] | 7.2h |  |
| 31 | 6.3 | Integrate Code components & Database | 5d | 2011-10-05 | 2011-10-11 | 27 |  |  | 2011-10-05 | 2011-10-11 | 5d | 0d |  | TL | 15h |  |
| 32 | 6.4 | Perform Systems Testing | 15d | 2011-10-12 | 2011-11-01 | 31 |  |  | 2011-10-12 | 2011-11-01 | 15d | 0d |  | PR1; PR2; PR3 | 135h |  |
| 33 | 6.5 | Review Results/Corrective Action | 5d | 2011-11-02 | 2011-11-08 | 32 |  |  | 2011-11-02 | 2011-11-08 | 5d | 0d |  | PL; QM; TL; PR1; PR2; PR3 | 90h |  |
| 34 | 7 | **Database Migration** | 35d | 2011-11-09 | 2011-12-27 | 33 |  |  | 2011-11-09 | 2011-12-27 | 35d | 0d |  |  | 195h |  |
| 35 | 7.1 | Produce Database migration plan | 10d | 2011-11-09 | 2011-11-22 | 33 |  |  | 2011-11-09 | 2011-11-22 | 10d | 0d |  | TL; PL | 60h |  |
| 36 | 7.2 | Review/finalize Database migration plan | 5d | 2011-11-23 | 2011-11-29 | 35 |  |  | 2011-11-23 | 2011-11-29 | 5d | 0d |  | PL; TL; PR1 | 45h |  |
| 37 | 7.3 | Extract Data from existing database | 5d | 2011-11-30 | 2011-12-06 | 36 |  |  | 2011-11-30 | 2011-12-06 | 5d | 0d |  | PL | 15h |  |
| 38 | 7.4 | Data Checking & Data cleaning | 10d | 2011-12-07 | 2011-12-20 | 37 |  |  | 2011-12-07 | 2011-12-20 | 10d | 0d |  | TL; PR1 | 60h |  |
| 39 | 7.5 | Upload data into new database | 5d | 2011-12-21 | 2011-12-27 | 38 |  |  | 2011-12-21 | 2011-12-27 | 5d | 0d |  | PL | 15h |  |
| 40 | 8 | **User Trial** | 102d | 2011-08-31 | 2012-01-19 |  |  |  | 2011-08-31 | 2012-01-19 | 102d | 0d |  |  | 282h |  |
| 41 | 8.1 | Write User Guide | 10d | 2011-08-31 | 2011-09-13 | 29 |  |  | 2011-08-31 | 2011-09-13 | 10d | 89d | 0d | PR3 | 30h |  |
| 42 | 8.2 | Review/finalize User Guide | 3d | 2011-09-14 | 2011-09-16 | 41 |  |  | 2011-09-14 | 2011-09-16 | 3d | 89d |  | QM | 9h |  |
| 43 | 8.3 | Write Trial test plan | 10d | 2011-11-09 | 2011-11-22 | 33 |  |  | 2011-11-09 | 2011-11-22 | 10d | 25d | 0d | PR3 | 30h |  |
| 44 | 8.4 | Review/finalize Trial test plan | 3d | 2011-11-23 | 2011-11-25 | 43 |  |  | 2011-11-23 | 2011-11-25 | 3d | 39d |  | PL; QM; TL | 27h |  |
| 45 | 8.5 | Install System | 3d | 2011-12-28 | 2011-12-30 | 39, 43 |  |  | 2011-12-28 | 2011-12-30 | 3d | 0d |  | PL | 9h |  |
| 46 | 8.6 | Perform User Trial | 5d | 2012-01-02 | 2012-01-06 | 45 |  |  | 2012-01-02 | 2012-01-06 | 5d | 0d |  | PL | 15h |  |
| 47 | 8.7 | Review Test Results/Corrective Action | 9d | 2012-01-09 | 2012-01-19 | 46 |  |  | 2012-01-09 | 2012-01-19 | 9d | 0d |  | PL; QM; TL; PR1; PR2; PR3 | 162h |  |
| 48 | 9 | **Management & Administration** | 40d | 2011-02-01 A | 2011-03-28 |  | 4% | 38.22d | 2011-02-01 | 2011-03-28 | 40d | 213d |  |  | 180h | 8h |
| 49 | 9.1 | General Management & Administration | 20d | 2011-02-01 A | 2011-02-28 |  | 7% | 18.67d | 2011-02-01 | 2011-02-28 | 20d | 233d |  | PL | 60h | 4h |
| 50 | 9.2 | Record Minutes of Meeting | 40d | 2011-02-01 A | 2011-03-28 |  | 3% | 38.67d | 2011-02-01 | 2011-03-28 | 40d | 213d |  | PR3 | 120h | 4h |
