# Project Gantt Chart

Schedule from MS Project, 2011-02-01 to 2012-01-18.
Microsoft, Inc

## Calendars

- OurStandard: Mon-Fri 08:00-12:00, 13:00-17:00; Sat-Sun off.

## Resources

| Resource |
| --- |
| PL |
| QM |
| TL |
| PR1 |
| PR2 |
| PR3 |

## Schedule

| ID | WBS | Task | Duration | Start | Finish | Predecessors | Total slack | Resources | Work |
| --- | --- | --- | --- | --- | --- | --- | --- | --- | --- |
| 1 | 1 | **Initial Planning** | 15d? | 2011-02-01 | 2011-02-21 |  | 0d |  | 432h |
| 2 | 1.1 | Produce Project Plan | 7d | 2011-02-01 | 2011-02-09 |  | 0d | PL; PR1; PR2; PR3 | 152h |
| 3 | 1.2 | Produce Quality Plan | 7d? | 2011-02-01 | 2011-02-09 |  | 4d | QM; PR1; PR2; PR3 | 152h |
| 4 | 1.3 | Set-up filing system | 4d? | 2011-02-10 | 2011-02-15 | 2 | 0d | QM | 32h |
| 5 | 1.4 | Review/finalize Plan | 4d? | 2011-02-16 | 2011-02-21 | 2, 3, 4 | 0d | PL; QM; TL | 96h |
| 6 | 2 | **Requirements Identification** | 20d? | 2011-02-22 | 2011-03-21 |  | 0d |  | 288h |
| 7 | 2.1 | Interview Users | 6d? | 2011-02-22 | 2011-03-01 | 5 | 0d | PL | 48h |
| 8 | 2.2 | Undertake Use Case Modeling | 4d? | 2011-03-02 | 2011-03-07 | 7 | 0d | QM; PL; TL | 96h |
| 9 | 2.3 | Produce Use Case Model Survey | 6d? | 2011-03-08 | 2011-03-15 | 8 | 0d | PL | 48h |
| 10 | 2.4 | Review/finalize Requirements documentation | 4d? | 2011-03-16 | 2011-03-21 | 9 | 0d | PL; QM; TL | 96h |
| 11 | 3 | **Requirements Specification** | 27.75d? | 2011-03-22 | 2011-04-28 |  | 0d |  | 762h |
| 12 | 3.1 | Identify Domain Objects/Attributes | 5.5d? | 2011-03-22 | 2011-03-29 | 10 | 0d | PR1; PR2; PR3 | 132h |
| 13 | 3.2 | Produce Class diagrams | 12d? | 2011-03-29 | 2011-04-14 | 12 | 2.25d | PL | 96h |
| 14 | 3.3 | Write UCRR (Analysis) | 14.25d? | 2011-03-29 | 2011-04-18 | 12 | 0d | PR1; PR2; PR3 | 342h |
| 15 | 3.4 | Review/finalize Use Case Realization Reports | 8d? | 2011-04-18 | 2011-04-28 | 13, 14 | 0d | PL; QM; TL | 192h |
| 16 | 4 | **Design Modeling** | 43.25d? | 2011-04-28 | 2011-06-28 |  | 0d |  | 1406h |
| 17 | 4.1 | Prototype User Interface | 20d? | 2011-04-28 | 2011-05-26 | 15 | 168.38d | TL; QM; PR1 | 480h |
| 18 | 4.2 | Create transition strategy from analysis to design | 7d? | 2011-04-28 | 2011-05-09 | 15 | 0d | PL | 56h |
| 19 | 4.3 | Define software architecture | 7d? | 2011-05-09 | 2011-05-18 | 18 | 0d | PL | 56h |
| 20 | 4.4 | Create DB Design | 7d? | 2011-05-18 | 2011-05-27 | 19 | 7.25d | PL | 56h |
| 21 | 4.5 | Write UCRR (Design) | 14.25d? | 2011-05-18 | 2011-06-07 | 19 | 0d | PR1; PR2; PR3 | 342h |
| 22 | 4.6 | Produce Object Specifications | 7d? | 2011-05-09 | 2011-05-18 | 18 | 174.38d | PR1; PR2; PR3 | 168h |
| 23 | 4.7 | Produce Design Model Report | 7d? | 2011-06-08 | 2011-06-16 | 18, 19, 20, 21 | 0d | TL | 56h |
| 24 | 4.8 | Review/finalize Design Document | 8d? | 2011-06-17 | 2011-06-28 | 23 | 0d | PL; QM; TL | 192h |

| ID | WBS | Task | Duration | Start | Finish | Predecessors | Total slack | Free slack | Resources | Work |
| --- | --- | --- | --- | --- | --- | --- | --- | --- | --- | --- |
| 25 | 5 | **Programming** | 47d? | 2011-06-29 | 2011-09-01 |  | 0d |  |  | 1656h |
| 26 | 5.1 | Software Coding | 40d? | 2011-06-29 | 2011-08-23 | 24 | 0d |  | PL; QM; TL; PR1; PR2; PR3 | 1440h |
| 27 | 5.2 | Define Database tables and fields | 6d? | 2011-06-29 | 2011-07-06 | 24 | 139.12d |  | TL | 48h |
| 28 | 5.3 | Perform Unit Testing | 7d? | 2011-08-24 | 2011-09-01 | 26 | 0d |  | PR1; PR2; PR3 | 168h |
| 29 | 6 | **Database Migration** | 39.12d? | 2011-09-02 | 2011-10-27 |  | 0d |  |  | 745h |
| 30 | 6.1 | Produce Database migration plan | 7d? | 2011-09-02 | 2011-09-12 | 28 | 0d |  | TL | 56h |
| 31 | 6.2 | Review/finalize Database migration plan | 8.12d? | 2011-09-13 | 2011-09-23 | 30 | 0d |  | PL; QM; TL | 177h |
| 32 | 6.3 | Extract Data from existing database | 8d? | 2011-09-23 | 2011-10-05 | 31 | 0d |  | PL | 64h |
| 33 | 6.4 | Data Checking & Data cleaning | 8d? | 2011-10-05 | 2011-10-17 | 32 | 0d |  | PL; QM; TL; PR1; PR2; PR3 | 384h |
| 34 | 6.5 | Upload data into new database | 8d? | 2011-10-17 | 2011-10-27 | 33 | 0d |  | PL | 64h |
| 35 | 7 | **Systems Testing** | 65.12d? | 2011-09-02 | 2011-12-02 |  | 33d |  |  | 872h |
| 36 | 7.1 | Prepare Systems Test Plan | 7d? | 2011-10-27 | 2011-11-07 | 34 | 0d |  | PL; QM; TL | 168h |
| 37 | 7.2 | Review/finalize Systems Test Plan | 4d? | 2011-11-07 | 2011-11-11 | 36 | 0d |  | PL; QM; TL | 96h |
| 38 | 7.3 | Integrate Code components & Database | 7d? | 2011-09-02 | 2011-09-12 | 28 | 91.12d |  | TL | 56h |
| 39 | 7.4 | Perform Systems Testing | 7d? | 2011-11-11 | 2011-11-22 | 37 | 0d |  | PR1; PR2; PR3 | 168h |
| 40 | 7.5 | Review Results/Corrective Action | 8d? | 2011-11-22 | 2011-12-02 | 39 | 0d |  | PL; QM; TL; PR1; PR2; PR3 | 384h |
| 41 | 8 | **User Trial** | 33d? | 2011-12-02 | 2012-01-18 |  | 0d |  |  | 808h |
| 42 | 8.1 | Write User Guide | 7d? | 2011-12-02 | 2011-12-13 | 40 | 22d | 0d | PR1 | 56h |
| 43 | 8.2 | Review/finalize User Guide | 4d? | 2011-12-13 | 2011-12-19 | 42 | 22d |  | QM | 32h |
| 44 | 8.3 | Write Trial test plan | 7d? | 2011-12-02 | 2011-12-13 | 40 | 0d |  | PL; QM; TL | 168h |
| 45 | 8.4 | Review/finalize Trial test plan | 4d? | 2011-12-13 | 2011-12-19 | 44 | 0d |  | PL; QM; TL | 96h |
| 46 | 8.5 | Install System | 8d? | 2011-12-19 | 2011-12-29 | 45 | 0d |  | PL | 64h |
| 47 | 8.6 | Perform User Trial | 7d? | 2011-12-29 | 2012-01-09 | 46 | 0d |  | PL | 56h |
| 48 | 8.7 | Review Test Results/Corrective Action | 7d? | 2012-01-09 | 2012-01-18 | 47 | 0d |  | PL; QM; TL; PR1; PR2; PR3 | 336h |
