# Project Gantt Chart

Schedule from MS Project, 2011-02-01 to 2012-01-06, 3 hours a day, A marks actual dates.
Microsoft, Inc

## Calendars

- OurStandard: Mon-Fri 20:00-23:00; Sat-Sun off.

## Resources

| Resource |
| --- |
| PL |
| QM |
| TL |
| PR1 |
| PR2 |
| PR3 |

## Schedule

| ID | WBS | Task | Duration | Start | Finish | Predecessors | Complete | Remaining | Baseline start | Baseline finish | Baseline duration | Total slack | Free slack | Constraint | Resources | Work | Actual work |
| --- | --- | --- | --- | --- | --- | --- | --- | --- | --- | --- | --- | --- | --- | --- | --- | --- | --- |
| 1 | 1 | **Initial Planning** | 18d | 2011-02-01 A | 2011-02-24 A |  | 100% |  | 2011-02-01 | 2011-02-24 | 18d |  |  |  |  | 99h | 99h |
| 2 | 1.1 | Produce Project Plan | 9d | 2011-02-01 A | 2011-02-11 A |  | 100% |  | 2011-02-01 | 2011-02-11 | 9d |  |  |  | PL | 27h | 27h |
| 3 | 1.2 | Produce Quality Plan | 9d | 2011-02-01 A | 2011-02-11 A |  | 100% |  | 2011-02-01 | 2011-02-11 | 9d |  |  |  | QM | 27h | 27h |
| 4 | 1.3 | Set-up filing system | 6d | 2011-02-14 A | 2011-02-21 A | 2 | 100% |  | 2011-02-14 | 2011-02-21 | 6d |  |  |  | QM | 18h | 18h |
| 5 | 1.4 | Review/finalize Plan | 3d | 2011-02-22 A | 2011-02-24 A | 2, 3, 4 | 100% |  | 2011-02-22 | 2011-02-24 | 3d |  |  |  | PL; QM; TL | 27h | 27h |
| 6 | 2 | **Requirements Identification** | 29d | 2011-02-25 A | 2011-04-06 A | 5 | 100% |  | 2011-02-25 | 2011-04-06 | 29d |  |  |  |  | 123h | 123h |
| 7 | 2.1 | Interview Users | 9d | 2011-02-25 A | 2011-03-09 A | 5 | 100% |  | 2011-02-25 | 2011-03-09 | 9d |  |  |  | PL | 27h | 27h |
| 8 | 2.2 | Undertake Use Case Modeling | 5d | 2011-03-10 A | 2011-03-16 A | 7 | 100% |  | 2011-03-10 | 2011-03-16 | 5d |  |  |  | PL | 15h | 15h |
| 9 | 2.3 | Produce Use Case Model Survey | 9d | 2011-03-17 A | 2011-03-29 A | 8 | 100% |  | 2011-03-17 | 2011-03-29 | 9d |  |  |  | PL | 27h | 27h |
| 10 | 2.4 | Review/finalize Requirements documentation | 6d | 2011-03-30 A | 2011-04-06 A | 9 | 100% |  | 2011-03-30 | 2011-04-06 | 6d |  |  | finish no earlier than 2011-04-06 | PL; QM; TL | 54h | 54h |
| 11 | 3 | **Requirements Specification** | 38d | 2011-04-07 A | 2011-05-30 A |  | 100% |  | 2011-04-07 | 2011-06-06 | 43d |  |  |  |  | 228h | 228h |
| 12 | 3.1 | Identify Domain Objects/Attributes | 3d | 2011-04-07 A | 2011-04-11 A |  | 100% |  | 2011-04-07 | 2011-04-11 | 3d |  |  |  | PR1; PR2; QM | 27h | 27h |
| 13 | 3.2 | Produce Class diagrams | 9d | 2011-04-12 A | 2011-04-22 A | 12 | 100% |  | 2011-04-12 | 2011-04-22 | 9d |  |  |  | PL | 27h | 27h |
| 14 | 3.3 | Write UCRR (Analysis) | 20d | 2011-04-25 A | 2011-05-20 A | 13 | 100% |  | 2011-04-25 | 2011-05-27 | 25d |  |  |  | PR1; PR2 [50%]; QM [50%] | 120h | 120h |
| 15 | 3.4 | Review/finalize Use Case Realization Reports | 6d | 2011-05-23 A | 2011-05-30 A | 13, 14 | 100% |  | 2011-05-30 | 2011-06-06 | 6d |  |  |  | PL; QM; TL | 54h | 54h |
| 16 | 4 | **Design Modeling** | 72d | 2011-04-25 A | 2011-08-02 |  | 42% | 41.58d | 2011-06-07 | 2011-08-16 | 51d | 108d |  |  |  | 444h | 135h |
| 17 | 4.1 | Prototype User Interface | 15d | 2011-04-25 A | 2011-05-13 A | 13 | 100% |  | 2011-06-07 | 2011-06-27 | 15d |  |  |  | TL; QM [50%]; PR2 [50%] | 90h | 90h |
| 18 | 4.2 | Create transition strategy from analysis to design | 5d | 2011-05-31 A | 2011-06-06 A | 15 | 100% |  | 2011-06-07 | 2011-06-13 | 5d |  |  |  | PL | 15h | 15h |
| 19 | 4.3 | Define software architecture | 5d | 2011-06-07 A | 2011-06-13 A | 18 | 100% |  | 2011-06-14 | 2011-06-20 | 5d |  |  |  | TL | 15h | 15h |
| 20 | 4.4 | Create DB Design | 5d | 2011-06-14 A | 2011-06-20 A | 19 | 100% |  | 2011-06-21 | 2011-06-27 | 5d |  |  |  | PL | 15h | 15h |
| 21 | 4.5 | Write UCRR (Design) | 20d | 2011-06-14 | 2011-07-11 | 19 |  |  | 2011-06-21 | 2011-07-25 | 25d | 5d | 0d |  | PR1; PR2; QM | 180h |  |
| 22 | 4.6 | Produce Object Specifications | 5d | 2011-07-12 | 2011-07-18 | 21 |  |  | 2011-07-26 | 2011-08-01 | 5d | 123d |  |  | PR1; PR2; QM | 45h |  |
| 23 | 4.7 | Produce Design Model Report | 10d | 2011-07-12 | 2011-07-25 | 18, 19, 20, 21 |  |  | 2011-07-26 | 2011-08-08 | 10d | 5d | 0d |  | TL | 30h |  |
| 24 | 4.8 | Review/finalize Design Document | 6d | 2011-07-26 | 2011-08-02 | 23 |  |  | 2011-08-09 | 2011-08-16 | 6d | 5d | 0d |  | PL; QM; TL | 54h |  |

| ID | WBS | Task | Duration | Start | Finish | Predecessors | Complete | Remaining | Baseline start | Baseline finish | Baseline duration | Total slack | Free slack | Resources | Work | Actual work |
| --- | --- | --- | --- | --- | --- | --- | --- | --- | --- | --- | --- | --- | --- | --- | --- | --- |
| 25 | 5 | **Programming** | 36d | 2011-08-03 A | 2011-09-21 |  | 14% | 31d | 2011-08-17 | 2011-10-04 | 35d | 0d |  |  | 300h | 15h |
| 26 | 5.1 | Define Database tables and fields | 5d | 2011-08-03 A | 2011-08-09 A | 24 | 100% |  | 2011-08-17 | 2011-08-23 | 5d |  |  | TL | 15h | 15h |
| 27 | 5.2 | **Software Coding** | 31d | 2011-08-10 | 2011-09-21 | 26 |  |  | 2011-08-24 | 2011-10-04 | 30d | 0d |  |  | 285h |  |
| 28 | 5.2.1 | Set up source structure | 1d | 2011-08-10 | 2011-08-10 | 26 |  |  |  |  |  | 0d |  | TL | 3h |  |
| 29 | 5.2.2 | Component Coding | 20d | 2011-08-11 | 2011-09-07 | 28 |  |  |  |  |  | 0d |  | QM; PR1; PR2; PL | 192h |  |
| 30 | 5.2.3 | Unit Testing | 5d | 2011-09-08 | 2011-09-14 | 29 |  |  |  |  |  | 0d |  | QM; PR1; PR2 | 45h |  |
| 31 | 5.2.4 | Peer Review Testing | 5d | 2011-09-15 | 2011-09-21 | 30 |  |  |  |  |  | 0d |  | PL; TL; PR3 | 45h |  |
| 32 | 6 | **Systems Testing** | 61d | 2011-08-03 | 2011-10-26 |  |  |  | 2011-08-17 | 2011-11-08 | 60d | 36d |  |  | 301.2h |  |
| 33 | 6.1 | Prepare Systems Test Plan | 10d | 2011-08-03 | 2011-08-16 | 24 |  |  | 2011-08-17 | 2011-08-30 | 10d | 85d | 0d | PL [80%]; PR3 | 54h |  |
| 34 | 6.2 | Review/finalize Systems Test Plan | 3d | 2011-08-17 | 2011-08-19 | 33 |  |  | 2011-08-31 | 2011-09-02 | 3d | 95d |  | PL [80%] | 7.2h |  |
| 35 | 6.3 | Integrate Code components & Database | 5d | 2011-09-22 | 2011-09-28 | 27 |  |  | 2011-10-05 | 2011-10-11 | 5d | 0d |  | TL | 15h |  |
| 36 | 6.4 | Perform Systems Testing | 15d | 2011-09-29 | 2011-10-19 | 35 |  |  | 2011-10-12 | 2011-11-01 | 15d | 0d |  | PR1; PR2; PR3 | 135h |  |
| 37 | 6.5 | Review Results/Corrective Action | 5d | 2011-10-20 | 2011-10-26 | 36 |  |  | 2011-11-02 | 2011-11-08 | 5d | 0d |  | PL; QM; TL; PR1; PR2; PR3 | 90h |  |
| 38 | 7 | **Database Migration** | 35d | 2011-10-27 | 2011-12-14 | 37 |  |  | 2011-11-09 | 2011-12-27 | 35d | 0d |  |  | 195h |  |
| 39 | 7.1 | Produce Database migration plan | 10d | 2011-10-27 | 2011-11-09 | 37 |  |  | 2011-11-09 | 2011-11-22 | 10d | 0d |  | TL; PL | 60h |  |
| 40 | 7.2 | Review/finalize Database migration plan | 5d | 2011-11-10 | 2011-11-16 | 39 |  |  | 2011-11-23 | 2011-11-29 | 5d | 0d |  | PL; TL; PR1 | 45h |  |
| 41 | 7.3 | Extract Data from existing database | 5d | 2011-11-17 | 2011-11-23 | 40 |  |  | 2011-11-30 | 2011-12-06 | 5d | 0d |  | PL | 15h |  |
| 42 | 7.4 | Data Checking & Data cleaning | 10d | 2011-11-24 | 2011-12-07 | 41 |  |  | 2011-12-07 | 2011-12-20 | 10d | 0d |  | TL; PR1 | 60h |  |
| 43 | 7.5 | Upload data into new database | 5d | 2011-12-08 | 2011-12-14 | 42 |  |  | 2011-12-21 | 2011-12-27 | 5d | 0d |  | PL | 15h |  |
| 44 | 8 | **User Trial** | 103d | 2011-08-17 | 2012-01-06 |  |  |  | 2011-08-31 | 2012-01-19 | 102d | 0d |  |  | 282h |  |
| 45 | 8.1 | Write User Guide | 10d | 2011-08-17 | 2011-08-30 | 33 |  |  | 2011-08-31 | 2011-09-13 | 10d | 85d | 0d | PR3 | 30h |  |
| 46 | 8.2 | Review/finalize User Guide | 3d | 2011-08-31 | 2011-09-02 | 45 |  |  | 2011-09-14 | 2011-09-16 | 3d | 85d |  | QM | 9h |  |
| 47 | 8.3 | Write Trial test plan | 10d | 2011-10-27 | 2011-11-09 | 37 |  |  | 2011-11-09 | 2011-11-22 | 10d | 25d | 0d | PR3 | 30h |  |
| 48 | 8.4 | Review/finalize Trial test plan | 3d | 2011-11-10 | 2011-11-14 | 47 |  |  | 2011-11-23 | 2011-11-25 | 3d | 39d |  | PL; QM; TL | 27h |  |
| 49 | 8.5 | Install System | 3d | 2011-12-15 | 2011-12-19 | 43, 47 |  |  | 2011-12-28 | 2011-12-30 | 3d | 0d |  | PL | 9h |  |
| 50 | 8.6 | Perform User Trial | 5d | 2011-12-20 | 2011-12-26 | 49 |  |  | 2012-01-02 | 2012-01-06 | 5d | 0d |  | PL | 15h |  |
| 51 | 8.7 | Review Test Results/Corrective Action | 9d | 2011-12-27 | 2012-01-06 | 50 |  |  | 2012-01-09 | 2012-01-19 | 9d | 0d |  | PL; QM; TL; PR1; PR2; PR3 | 162h |  |

| ID | WBS | Task | Duration | Start | Finish | Complete | Remaining | Baseline start | Baseline finish | Baseline duration | Total slack | Resources | Work | Actual work |
| --- | --- | --- | --- | --- | --- | --- | --- | --- | --- | --- | --- | --- | --- | --- |
| 52 | 9 | **Management & Administration** | 40d | 2011-02-01 A | 2011-03-28 | 32% | 27.33d | 2011-02-01 | 2011-03-28 | 40d | 199d |  | 180h | 57h |
| 53 | 9.1 | General Management & Administration | 20d | 2011-02-01 A | 2011-02-28 | 47% | 10.67d | 2011-02-01 | 2011-02-28 | 20d | 219d | PL | 60h | 28h |
| 54 | 9.2 | Record Minutes of Meeting | 40d | 2011-02-01 A | 2011-03-28 | 24% | 30.33d | 2011-02-01 | 2011-03-28 | 40d | 199d | PR3 | 120h | 29h |
